Schedule from MS Project, 2021-11-01 to 2022-01-18, costs in €.
UPV/EHU

## Calendars

- proyect: Mon-Fri 09:00-13:00, 15:00-19:00; Sat-Sun off. Exceptions (off unless hours are given): 2021-12-06 to 2021-12-08 (Constitución), 2021-12-24 (Navidad), 2021-12-31 (Fin año), 2022-01-06 to 2022-01-07 (Reyes).

## Resources

| Resource | Rate |
| --- | --- |
| Iker Costa | 30 |
| Gaizka Martín | 30 |
| Mattin Elorza | 30 |
| Pablo Ortega | 30 |
| Alvaro Añua | 15 |

## Schedule

| ID | WBS | Task | Type | Duration | Start | Finish | Predecessors | Baseline start | Baseline finish | Baseline duration | Total slack | Free slack | Resources | Work | Cost | Baseline cost | Text1 |
| --- | --- | --- | --- | --- | --- | --- | --- | --- | --- | --- | --- | --- | --- | --- | --- | --- | --- |
| 1 | 1 | **Diseño** |  | 21d | 2021-11-01 | 2021-11-29 |  | 2021-11-01 | 2021-11-29 | 21d | 0d |  |  | 336h | 10,080 | 10,080 | RES1 |
| 2 | 1.1 | Diseño interfaces |  | 14d | 2021-11-01 | 2021-11-18 |  | 2021-11-01 | 2021-11-18 | 14d | 0d |  | Iker Costa | 112h | 3,360 | 3,360 |  |
| 3 | 1.2 | Diseño bot |  | 7d | 2021-11-19 | 2021-11-29 | 2 | 2021-11-19 | 2021-11-29 | 7d | 0d |  | Iker Costa | 56h | 1,680 | 1,680 |  |
| 4 | 1.3 | Diseño servidor |  | 7d | 2021-11-19 | 2021-11-29 | 2 | 2021-11-19 | 2021-11-29 | 7d | 0d |  | Iker Costa | 56h | 1,680 | 1,680 |  |
| 5 | 1.4 | Diseño web |  | 7d | 2021-11-19 | 2021-11-29 | 2 | 2021-11-19 | 2021-11-29 | 7d | 7d | 0d | Iker Costa | 56h | 1,680 | 1,680 |  |
| 6 | 1.5 | Diseño BBDD |  | 7d | 2021-11-19 | 2021-11-29 | 2 | 2021-11-19 | 2021-11-29 | 7d | 7d | 0d | Iker Costa | 56h | 1,680 | 1,680 |  |
| 7 | 1.6 | Diseño completado | milestone | 0d | 2021-11-29 | 2021-11-29 | 3, 4, 5, 6 | 2021-11-29 | 2021-11-29 | 0d | 29d |  |  |  |  |  | H1 |
| 8 | 2 | **Implementación** |  | 14d | 2021-11-30 | 2021-12-22 |  | 2021-11-30 | 2021-12-22 | 14d | 0d |  |  | 336h | 10,080 | 10,080 | RES2 |
| 9 | 2.1 | Desarrollo bot |  | 14d | 2021-11-30 | 2021-12-22 | 3 | 2021-11-30 | 2021-12-22 | 14d | 0d |  | Gaizka Martín | 112h | 3,360 | 3,360 |  |
| 10 | 2.2 | Desarrollo servidor |  | 14d | 2021-11-30 | 2021-12-22 | 4 | 2021-11-30 | 2021-12-22 | 14d | 0d |  | Mattin Elorza | 112h | 3,360 | 3,360 |  |
| 11 | 2.3 | Desarrollo web |  | 7d | 2021-11-30 | 2021-12-13 | 5 | 2021-11-30 | 2021-12-13 | 7d | 7d | 0d | Pablo Ortega | 56h | 1,680 | 1,680 |  |
| 12 | 2.4 | Desarrollo BBDD |  | 7d | 2021-11-30 | 2021-12-13 | 6 | 2021-11-30 | 2021-12-13 | 7d | 7d | 0d | Pablo Ortega | 56h | 1,680 | 1,680 |  |
| 13 | 2.5 | Desarrollo completado | milestone | 0d | 2021-12-22 | 2021-12-22 | 9, 10, 11, 12 | 2021-12-22 | 2021-12-22 | 0d | 15d |  |  |  |  |  | H2 |
| 14 | 3 | **Pruebas** |  | 20d | 2021-12-14 | 2022-01-14 |  | 2021-12-14 | 2022-01-14 | 20d | 0d |  |  | 336h | 10,080 | 10,080 | RES3 |
| 15 | 3.1 | Pruebas unitarias bot |  | 3d | 2021-12-23 | 2021-12-28 | 9 | 2021-12-23 | 2021-12-28 | 3d | 0d |  | Gaizka Martín | 24h | 720 | 720 |  |
| 16 | 3.2 | Pruebas unitarias servidor |  | 3d | 2021-12-23 | 2021-12-28 | 10 | 2021-12-23 | 2021-12-28 | 3d | 0d |  | Mattin Elorza | 24h | 720 | 720 |  |
| 17 | 3.3 | Pruebas unitarias web |  | 3d | 2021-12-14 | 2021-12-16 | 11 | 2021-12-14 | 2021-12-16 | 3d | 7d |  | Pablo Ortega | 24h | 720 | 720 |  |
| 18 | 3.4 | Pruebas unitarias base de datos |  | 3d | 2021-12-14 | 2021-12-16 | 12 | 2021-12-14 | 2021-12-16 | 3d | 7d |  | Pablo Ortega | 24h | 720 | 720 |  |
| 19 | 3.5 | Pruebas de integración |  | 5d | 2021-12-29 | 2022-01-05 | 15, 16, 17, 18 | 2021-12-29 | 2022-01-05 | 5d | 0d |  | Mattin Elorza; Gaizka Martín; Pablo Ortega | 120h | 3,600 | 3,600 |  |
| 20 | 3.6 | Pruebas de rendimiento |  | 5d | 2022-01-10 | 2022-01-14 | 19 | 2022-01-10 | 2022-01-14 | 5d | 0d |  | Mattin Elorza; Pablo Ortega; Gaizka Martín | 120h | 3,600 | 3,600 |  |
| 21 | 3.7 | Pruebas completadas | milestone | 0d | 2022-01-14 | 2022-01-14 | 20 | 2022-01-14 | 2022-01-14 | 0d | 0d |  |  |  |  |  | H3 |
| 22 | 4 | **Documentación** |  | 1d | 2022-01-17 | 2022-01-17 |  | 2022-01-17 | 2022-01-17 | 1d | 0d |  |  | 24h | 360 | 360 | RES4 |
| 23 | 4.1 | Manual de usuario |  | 1d | 2022-01-17 | 2022-01-17 | 21 | 2022-01-17 | 2022-01-17 | 1d | 0d |  | Alvaro Añua | 8h | 120 | 120 |  |
| 24 | 4.2 | Manual de despliegue |  | 1d | 2022-01-17 | 2022-01-17 | 21 | 2022-01-17 | 2022-01-17 | 1d | 0d |  | Alvaro Añua | 8h | 120 | 120 |  |
| 25 | 4.3 | Documentación técnica |  | 1d | 2022-01-17 | 2022-01-17 | 21 | 2022-01-17 | 2022-01-17 | 1d | 0d |  | Alvaro Añua | 8h | 120 | 120 |  |
| 26 | 4.4 | Fin documentación | milestone | 0d | 2022-01-17 | 2022-01-17 | 23, 24, 25 | 2022-01-17 | 2022-01-17 | 0d | 0d |  |  |  |  |  | H4 |
| 27 | 5 | Validación |  | 1d | 2022-01-18 | 2022-01-18 | 26 | 2022-01-18 | 2022-01-18 | 1d | 0d |  | Iker Costa | 8h | 240 | 240 |  |
| 28 | 6 | Fin proyecto | milestone | 0d | 2022-01-18 | 2022-01-18 | 27 | 2022-01-18 | 2022-01-18 | 0d | 0d |  |  |  |  |  | H5 |
